# PlanningValidation

Schedule from MS Project, 2013-03-04 to 2013-03-29, A marks actual dates.

## Calendars

- Standard[Imported]: Mon-Fri 08:00-12:00, 13:00-17:00; Sat-Sun off.

## Resources

| Resource | Group |
| --- | --- |
| Non affecté |  |
| Andrei | Validation |
| Anton | Validation |
| Konstantin | Validation |
| Valid-FLO |  |
| TestBench |  |

## Schedule

| ID | WBS | Task | Type | Duration | Start | Finish | Complete | Remaining | Total slack | Constraint | Resources | Work | Actual work |
| --- | --- | --- | --- | --- | --- | --- | --- | --- | --- | --- | --- | --- | --- |
| 1 | 1 | **STR3** |  | 20d | 2013-03-04 A | 2013-03-29 | 30% | 14.04d | 0d |  |  | 288h | 24h |
| 2 | 1.1 | VTD - Control and Monitor the Batteries Charge |  | 1d | 2013-03-04 A | 2013-03-04 A | 100% |  |  |  |  |  |  |
| 3 | 1.2 | VTD - Control of microclimate system |  | 3d | 2013-03-04 A | 2013-03-06 A | 100% |  |  |  |  |  |  |
| 4 | 1.3 | VTD - Parking mode in activate state |  | 1d | 2013-03-04 A | 2013-03-04 A | 100% |  |  |  |  |  |  |
| 5 | 1.4 | VTD - Manage km-meter and operating times |  | 1d | 2013-03-04 A | 2013-03-04 A | 100% |  |  |  |  |  |  |
| 6 | 1.5 | VTD - Machine Room Ventilation System |  | 1d | 2013-03-04 A | 2013-03-04 A | 100% |  |  |  |  |  |  |
| 7 | 1.6 | VTD - Sanding System Management |  | 3d | 2013-03-04 A | 2013-03-06 A | 100% |  |  |  |  |  |  |
| 8 | 1.7 | VTD - Antislide Protection System (WSP) |  | 2d | 2013-03-22 | 2013-03-23 |  |  | 4d | start no earlier than 2013-03-22 | Konstantin | 16h |  |
| 9 | 1.8 | VTD - Brake Substitution Control |  | 3d | 2013-03-20 | 2013-03-22 |  |  | 5d | start no earlier than 2013-03-20 | Anton | 24h |  |
| 10 | 1.9 | VTD - Management of auxiliary loads contactors |  | 3d | 2013-03-20 | 2013-03-22 |  |  | 5d | start no earlier than 2013-03-20 | Andrei | 24h |  |
| 11 | 1.10 | VTD - Detect and report a fire and fire extinction |  | 1d | 2013-03-25 | 2013-03-25 |  |  | 4d | start no earlier than 2013-03-25 | Andrei | 8h |  |
| 12 | 1.11 | VTD - Axle-box bearings temperature control |  | 1d | 2013-03-25 | 2013-03-25 |  |  | 4d | start no earlier than 2013-03-25 | Konstantin | 8h |  |
| 13 | 1.12 | VTD - Bring Train into Service. Part 2 - Selection of active section (cab) |  | 2d | 2013-03-26 | 2013-03-27 |  |  | 2d | start no earlier than 2013-03-26 | Konstantin | 16h |  |
| 14 | 1.13 | VTD - Develop Driving Orders | manual | 4d | 2013-03-13 A | 2013-03-18 | 75% | 1d |  | start no earlier than 2013-03-13 | Anton | 32h | 24h |
| 15 | 1.14 | VTD - Provision and Management of 110 V Supply |  | 2d | 2013-03-26 | 2013-03-27 |  |  | 2d | start no earlier than 2013-03-26 | Anton | 16h |  |
| 16 | 1.15 | VTD - Indicate Locomotive Presence (Acoustic Way) |  | 1d | 2013-03-25 | 2013-03-25 |  |  | 4d | start no earlier than 2013-03-25 | Anton | 8h |  |
| 17 | 1.16 | VTD - Measure and Indicate the Train Speed |  | 1d | 2013-03-23 | 2013-03-23 |  |  | 4d | start no earlier than 2013-03-23 | Anton | 8h |  |
| 18 | 1.17 | VTD - Parking brake control |  | 3d | 2013-03-26 | 2013-03-28 |  |  | 1d | start no earlier than 2013-03-26 | Andrei | 24h |  |
| 19 | 1.18 | VTD - Compressed Air Production |  | 2d | 2013-03-18 | 2013-03-19 |  |  | 8d | start no earlier than 2013-03-18 | Konstantin | 16h |  |
| 20 | 1.19 | VTD - Manage the high voltage configuration (Desk control) |  | 1d | 2013-03-19 | 2013-03-19 |  |  | 8d | start no earlier than 2013-03-19 | Anton | 8h |  |
| 21 | 1.20 | VTD - Compressed Air Distribution |  | 2d | 2013-03-20 | 2013-03-21 |  |  | 6d | start no earlier than 2013-03-20 | Konstantin | 16h |  |
| 22 | 1.21 | VTD - Control the circuit breaker (Desk control) |  | 1d | 2013-03-29 | 2013-03-29 |  |  | 0d | start no earlier than 2013-03-29 | Anton | 8h |  |
| 23 | 1.22 | VTD - Manage the pantographs (Desk control) |  | 1d | 2013-03-29 | 2013-03-29 |  |  | 0d | start no earlier than 2013-03-29 | Konstantin | 8h |  |
| 24 | 1.23 | VTD - Grounding of the locomotive |  | 1d | 2013-03-29 | 2013-03-29 |  |  | 0d | start no earlier than 2013-03-29 | Andrei | 8h |  |
| 25 | 1.24 | VTD - Pneumatic brake control |  | 2d | 2013-03-18 | 2013-03-19 |  |  | 8d | start no earlier than 2013-03-18 | Andrei | 16h |  |
| 26 | 1.25 | VTD - Tape operating data |  | 1d | 2013-03-28 | 2013-03-28 |  |  | 1d | start no earlier than 2013-03-28 | Anton | 8h |  |
| 27 | 1.26 | VTD - Broadcast the time |  | 1d | 2013-03-28 | 2013-03-28 |  |  | 1d | start no earlier than 2013-03-28 | Konstantin | 8h |  |
| 28 | 1.27 | VTD - Generate Sounds |  | 1d | 2013-03-23 | 2013-03-23 |  |  | 4d | start no earlier than 2013-03-23 | Andrei | 8h |  |
| 29 | 1.28 | VTD - Administrate locomotive topology (HMI Part) |  | 1d | 2013-03-04 A | 2013-03-04 A | 100% |  |  |  |  |  |  |
